Schedule from OmniPlan.

## Resources

| Resource | Group |
| --- | --- |
| Staff 2 | staff |
| Conference Room 1 | equipment |
| Equipment & Material | group |
| Staff 1 | staff |
| 32.2 | staff |

## Schedule

| ID | WBS | Task | Type | Predecessors | Work |
| --- | --- | --- | --- | --- | --- |
| 1 | 1 | **Identify need** |  |  |  |
| 2 | 1.1 | # of racks needed |  |  | 24h |
| 3 | 1.2 | total # of Kw |  |  | 24h |
| 4 | 2 | **Internal Steps:** |  |  |  |
| 5 | 2.1 | Set up a wiki/documentation area |  |  | 8h |
| 6 | 2.2 | set up folders for documentation/contracts etc. |  |  | 8h |
| 7 | 2.3 | spreadsheets for U level layouts, bins, inventory etc. |  |  | 8h |
| 8 | 2.4 | set up meeting cadence |  |  | 8h |
| 9 | 3 | **Sample topology** |  | 1, 4 |  |
| 10 | 3.1 | sample bom |  |  | 16h |
| 11 | 3.2 | Sample U, and cabinet layout |  |  | 8h |
| 12 | 3.3 | Topology defined |  |  | 16h |
| 13 | 3.4 | estimate budget |  |  | 16h |
| 14 | 3.5 | Security review |  |  | 16h |
| 15 | 3.6 | Project initial review |  |  | 8h |
| 16 | 4 | **RFP/questionaire:** |  | 9 |  |
| 17 | 4.1 | Create and issue a RFP (small questionaire) |  |  | 40h |
| 18 | 4.2 | review answers |  | 17 | 40h |
| 19 | 5 | **Location Selection** |  | 16 |  |
| 20 | 5.1 | Review locations |  |  | 16h |
| 21 | 5.2 | See locations |  | 20 | 16h |
| 22 | 5.3 | Examine 1 lines, and ops processes |  | 20 | 16h |
| 23 | 5.4 | Finalize locations |  | 22 | 16h |
| 24 | 5.5 | Receive/review quote |  | 23 | 16h |
| 25 | 5.6 | Review cage layout |  | 23 | 16h |
| 26 | 5.7 | Review contract paperwork |  | 24, 25 | 40h |
| 27 | 5.8 | update budget |  | 26 | 2h |
| 28 | 5.9 | Sign MSA (Master Services Agreement) |  | 26, 27 | 40h |
| 29 | 5.10 | Sign Order (actual order) |  | 28 | 40h |
| 30 | 5.11 | Get a "SPACE READY DATE" | milestone | 29 |  |

| ID | WBS | Task | Type | Predecessors | Work |
| --- | --- | --- | --- | --- | --- |
| 31 | 6 | **Select Network providers** |  |  |  |
| 32 | 6.1 | confirm providers are on-net |  | 23 | 16h |
| 33 | 6.2 | Receive/review quote |  | 32 | 16h |
| 34 | 6.3 | Review contract paperwork |  | 33 | 40h |
| 35 | 6.4 | update budget |  | 34 | 16h |
| 36 | 6.5 | Sign MSA (Master Services Agreement) |  | 35 | 16h |
| 37 | 6.6 | Sign Order (actual order) |  | 29, 36 | 16h |
| 38 | 6.7 | get a Firm Order Commit (FOC) date. | milestone | 37 |  |
| 39 | 7 | **Peering fabric** |  | 23 |  |
| 40 | 7.1 | confirm fabrics that are available |  |  | 8h |
| 41 | 7.2 | Receive/review quote |  | 40 | 32h |
| 42 | 7.3 | Review contract paperwork |  | 41 | 16h |
| 43 | 7.4 | update budget |  | 42 | 8h |
| 44 | 7.5 | Sign MSA (Master Services Agreement) |  | 43 | 16h |
| 45 | 7.6 | Sign Order (actual order) |  | 44 | 8h |
| 46 | 8 | **vendor set up - sundries** |  | 9 |  |
| 47 | 8.1 | grainger |  |  | 8h |
| 48 | 8.2 | anixter |  |  | 8h |
| 49 | 8.3 | graybar |  |  | 8h |
| 50 | 8.4 | amazon |  |  | 8h |
| 51 | 8.5 | cdw |  |  | 8h |
| 52 | 8.6 | Quail |  |  | 8h |
| 53 | 8.7 | DatacenterGear |  |  | 8h |
| 54 | 8.8 | FiberStore |  |  | 8h |
| 55 | 8.9 | Flexoptix |  |  | 8h |

| ID | WBS | Task | Type | Predecessors | Work |
| --- | --- | --- | --- | --- | --- |
| 56 | 9 | **vendor set up - network reseller** |  | 9 |  |
| 57 | 9.1 | interview resellers, |  |  | 8h |
| 58 | 9.2 | request quote |  | 57 | 8h |
| 59 | 9.3 | Review contract paperwork |  | 58 | 8h |
| 60 | 9.4 | Sign Order (actual order) |  | 59 | 8h |
| 61 | 10 | **vendor set up - Integrator** |  | 9 |  |
| 62 | 10.1 | interview integrators |  |  | 16h |
| 63 | 10.2 | visit location |  | 62 | 8h |
| 64 | 10.3 | Request quote |  | 63 | 16h |
| 65 | 10.4 | Review contract paperwork |  | 64 | 16h |
| 66 | 10.5 | revise bom |  | 65 | 16h |
| 67 | 10.6 | layout and cabling verification |  | 66 | 16h |
| 68 | 10.7 | Sign Order (actual order) |  | 23, 67 | 8h |
| 69 | 11 | **Sundries:** |  | 9 |  |
| 70 | 11.1 | add parts to shopping lists |  |  | 16h |
| 71 | 11.2 | update budget |  |  | 8h |
| 72 | 11.3 | order parts. |  | 30 | 8h |
| 73 | 12 | **LOCAL RIR (eg: ARIN)** |  | 9 |  |
| 74 | 12.1 | Create POC Record |  |  | 8h |
| 75 | 12.2 | Create ORGid |  | 74 | 24h |
| 76 | 12.3 | ASN Request |  | 75 | 24h |
| 77 | 12.4 | IPv6 request |  | 76 | 24h |
| 78 | 12.5 | IPv4 transfer pre-approval |  | 77 | 24h |
| 79 | 12.6 | IPv4 waiting list |  | 78 | 24h |
| 80 | 12.7 | procure IPv4 space from broker market |  | 79 | 24h |
| 81 | 12.8 | Update Budget |  | 80 | 8h |
| 82 | 12.9 | Create Routing Objects. |  | 81 | 8h |
| 83 | 12.10 | Update network providers on IP/ASN info |  | 82 | 8h |
| 84 | 13 | IMPLEMENTATION PHASE | milestone | 19, 31 |  |
| 85 | 14 | Increase meeting cadence |  |  | 8h |

| ID | WBS | Task | Type | Predecessors | Work |
| --- | --- | --- | --- | --- | --- |
| 86 | 15 | **Integrator** |  | 61 |  |
| 87 | 15.1 | Rack build time (parts arrival) |  |  | 120h |
| 88 | 15.2 | Confirm rack assembly. |  | 87 | 8h |
| 89 | 15.3 | provide pre-configuration (if needed) |  | 88 | 16h |
| 90 | 15.4 | verify appropriate code revs. |  | 89 | 8h |
| 91 | 15.5 | verify appropriate cabling |  | 90 | 8h |
| 92 | 15.6 | Rack shipped to datacenter |  | 19, 91 | 16h |
| 93 | 16 | **Location** |  | 19 |  |
| 94 | 16.1 | Power circuits delivered |  |  | 80h |
| 95 | 16.2 | misc (eg: bolt down system) work |  |  | 40h |
| 96 | 16.3 | keycard/palm/fingerprint reader installed |  |  | 80h |
| 97 | 16.4 | Cage ready | milestone | 94, 95, 96 |  |
| 98 | 16.5 | Confirm ability to open tickets |  | 97 | 8h |
| 99 | 16.6 | confirm ability to visit |  | 97 | 8h |
| 100 | 16.7 | Open tickets for all incoming shipments |  | 97 | 8h |
| 101 | 16.8 | Open tickets for all needed crossconnects |  | 97 | 8h |
| 102 | 16.9 | Open tickets for boltdown |  | 97 | 8h |
| 103 | 16.10 | Open tickets to energize power |  | 97 | 8h |
| 104 | 17 | **Racks-Ready** |  |  |  |
| 105 | 17.1 | Racks received at datacenter |  | 93 | 8h |
| 106 | 17.2 | Racks placed in datacenter |  | 105 | 8h |
| 107 | 17.3 | racks bolted down |  | 106 | 8h |
| 108 | 17.4 | racks powered on. |  | 107 | 8h |
| 109 | 17.5 | Panels are set up to receive xconnects. |  | 108 | 8h |
| 110 | 17.6 | routers / switches BASE Config. |  | 108 | 16h |
| 111 | 17.7 | rack to spine interconnect cabling |  | 108 | 16h |

| ID | WBS | Task | Predecessors | Work |
| --- | --- | --- | --- | --- |
| 112 | 18 | **Sundries work** |  |  |
| 113 | 18.1 | Sundries arrive | 93 | 16h |
| 114 | 18.2 | Sundries unpacked/assembled | 113 | 8h |
| 115 | 19 | **Network Provider bringup** |  |  |
| 116 | 19.1 | Network provider xconnect finished | 110 | 16h |
| 117 | 19.2 | Network provider link working | 116 | 8h |
| 118 | 20 | **Peering Fabric** |  |  |
| 119 | 20.1 | Peering fabric xconnect finished | 110 | 16h |
| 120 | 20.2 | Peering Fabric link brought up | 119 | 8h |
| 121 | 21 | **Networking** |  |  |
| 122 | 21.1 | Routing ROAs created | 115 | 8h |
| 123 | 21.2 | Test all route objects. | 122 | 8h |
| 124 | 21.3 | Network Configuration Final | 123 | 40h |
| 125 | 22 | OOB verification | 121 | 8h |
| 126 | 23 | Documentation final updates | 121, 125 | 24h |
| 127 | 24 | **Server Imaging** | 121 |  |
| 128 | 24.1 | Server services created (eg: Dns, dhcp) |  | 8h |
| 129 | 24.2 | Web/app/db configuration | 128 | 24h |
| 130 | 24.3 | Server end to end tests | 129 | 16h |
| 131 | 24.4 | Stress test | 130 | 8h |
| 132 | 25 | **Monitoring:** | 129 |  |
| 133 | 25.1 | Syslog, SNMP, Sflow monitoring |  | 8h |
| 134 | 25.2 | System Monitoring |  | 16h |
| 135 | 25.3 | Grafana dashboards. | 134 | 16h |
| 136 | 25.4 | Alerting/escalation | 135 | 8h |

| ID | WBS | Task | Type | Predecessors | Work |
| --- | --- | --- | --- | --- | --- |
| 137 | 26 | **Failure Testing** |  | 132 |  |
| 138 | 26.1 | Fail a server (remove a drive, remove the network) - confirm alerts come in, confirm tickets are filed, and impact |  |  | 8h |
| 139 | 26.2 | Fail a network device. Confirm alerts come in, tickets filed, etc. |  | 138 | 8h |
| 140 | 26.3 | Fail a rack of equipment. Confirm alerts, tickets etc. |  | 139 | 8h |
| 141 | 26.4 | Fail and restore the DC, confirm things come back up as expected. Document, and resolve issues. |  | 140 | 8h |
| 142 | 26.5 | Test rolling back a deployment |  | 141 | 8h |
| 143 | 26.6 | Benchmark the site, and see what your limitations are. |  | 142 | 40h |
| 144 | 27 | **Cutover** |  | 137 |  |
| 145 | 27.1 | Data migration to site |  |  | 8h |
| 146 | 27.2 | GO LIVE | milestone | 145 |  |
| 147 | 28 | **Post install** |  | 146 |  |
| 148 | 28.1 | Archive of old site |  |  | 160h |
| 149 | 28.2 | Removal of old site |  |  | 160h |
| 150 | 29 | **Every quarter moving forward:** |  | 144 |  |
| 151 | 29.1 | Review ongoing capacity plan. | milestone |  |  |
| 152 | 29.2 | Send forecast to integrator / vendors | milestone |  |  |
| 153 | 29.3 | Order additional power as needed | milestone |  |  |
| 154 | 29.4 | Order additional space as needed etc. | milestone |  |  |
| 155 | 29.5 | Review a DR Plan. | milestone |  |  |
