Schedule from OmniPlan.

## Resources

| Resource | Group |
| --- | --- |
| Staff 2 | staff |
| Conference Room 1 | equipment |
| Equipment & Material | group |
| Staff 1 | staff |
| 32.2 | staff |

## Schedule

| ID | WBS | Task | Type | Predecessors | Work |
| --- | --- | --- | --- | --- | --- |
| 1 | 1 | **Identify need** |  |  |  |
| 2 | 1.1 | # of racks needed |  |  | 40h |
| 3 | 1.2 | total # of Kw |  |  | 40h |
| 4 | 2 | **Internal Steps:** |  |  |  |
| 5 | 2.1 | Set up a wiki/documentation area |  |  | 8h |
| 6 | 2.2 | set up folders for documentation/contracts etc. |  |  | 8h |
| 7 | 2.3 | spreadsheets for U level layouts, bins, inventory etc. |  |  | 8h |
| 8 | 2.4 | set up meeting cadence |  |  | 8h |
| 9 | 3 | **Sample topology** |  | 1, 4 |  |
| 10 | 3.1 | sample bom |  |  | 32h |
| 11 | 3.2 | Sample U, and cabinet layout |  |  | 16h |
| 12 | 3.3 | Topology defined |  |  | 16h |
| 13 | 3.4 | estimate budget |  |  | 40h |
| 14 | 3.5 | Security review |  |  | 16h |
| 15 | 3.6 | Project initial review |  |  | 16h |
| 16 | 4 | **RFP:** |  | 9 |  |
| 17 | 4.1 | Create and issue a RFP. |  |  | 40h |
| 18 | 4.2 | review answers |  | 17 | 80h |
| 19 | 4.3 | Follow up questions/answers |  | 18 | 80h |
| 20 | 5 | **Location Selection** |  | 16 |  |
| 21 | 5.1 | Review locations |  |  | 80h |
| 22 | 5.2 | See locations |  | 21 | 16h |
| 23 | 5.3 | Examine 1 lines, and ops processes |  | 22 | 16h |
| 24 | 5.4 | Finalize locations |  | 23 | 16h |
| 25 | 5.5 | Receive/review quote |  | 24 | 16h |
| 26 | 5.6 | Review cage layout |  | 25 | 16h |
| 27 | 5.7 | Review contract paperwork |  | 25, 26 | 80h |
| 28 | 5.8 | update budget |  | 27 | 16h |
| 29 | 5.9 | Sign MSA (Master Services Agreement) |  | 27, 28 | 40h |
| 30 | 5.10 | Sign Order (actual order) |  | 29 | 40h |
| 31 | 5.11 | Get a "SPACE READY DATE" | milestone | 30 |  |

| ID | WBS | Task | Type | Predecessors | Work |
| --- | --- | --- | --- | --- | --- |
| 32 | 6 | **Electrical Work** |  | 16 |  |
| 33 | 6.1 | Refine Scope of work |  |  | 16h |
| 34 | 6.2 | (eg: Busbar, breakers, grounding etc.) |  |  | 16h |
| 35 | 6.3 | Quote received |  | 33, 34 | 32h |
| 36 | 6.4 | order signed |  | 30, 35 | 8h |
| 37 | 7 | **Cabling Contractors** |  | 16 |  |
| 38 | 7.1 | Review cable map |  |  | 16h |
| 39 | 7.2 | Quote received |  | 38 | 32h |
| 40 | 7.3 | order signed |  | 30, 39 | 8h |
| 41 | 8 | **Misc contractors** |  |  |  |
| 42 | 8.1 | (eg: bolt down system), |  |  | 16h |
| 43 | 8.2 | Quote received |  | 42 | 32h |
| 44 | 8.3 | order signed |  | 30, 43 | 8h |
| 45 | 9 | structural engineering review |  | 24, 43 | 24h |
| 46 | 10 | permit review and approvals. |  | 24, 43, 45 | 40h |
| 47 | 11 | **Select Network providers** |  |  |  |
| 48 | 11.1 | confirm providers are on-net |  | 24 | 16h |
| 49 | 11.2 | Receive/review quote |  | 48 | 16h |
| 50 | 11.3 | Review contract paperwork |  | 49 | 40h |
| 51 | 11.4 | update budget |  | 50 | 16h |
| 52 | 11.5 | Sign MSA (Master Services Agreement) |  | 51 | 16h |
| 53 | 11.6 | Sign Order (actual order) |  | 30, 52 | 16h |
| 54 | 11.7 | get a Firm Order Commit (FOC) date. | milestone | 53 |  |
| 55 | 12 | **Peering fabric** |  | 24 |  |
| 56 | 12.1 | confirm fabrics that are available |  |  | 8h |
| 57 | 12.2 | Receive/review quote |  | 56 | 32h |
| 58 | 12.3 | Review contract paperwork |  | 57 | 16h |
| 59 | 12.4 | update budget |  | 58 | 8h |
| 60 | 12.5 | Sign MSA (Master Services Agreement) |  | 59 | 16h |
| 61 | 12.6 | Sign Order (actual order) |  | 60 | 8h |

| ID | WBS | Task | Predecessors | Work |
| --- | --- | --- | --- | --- |
| 62 | 13 | **vendor set up - sundries** | 9 |  |
| 63 | 13.1 | grainger |  | 8h |
| 64 | 13.2 | anixter |  | 8h |
| 65 | 13.3 | graybar |  | 8h |
| 66 | 13.4 | amazon |  | 8h |
| 67 | 13.5 | cdw |  | 8h |
| 68 | 13.6 | Quail |  | 8h |
| 69 | 13.7 | DatacenterGear |  | 8h |
| 70 | 13.8 | FiberStore |  | 8h |
| 71 | 13.9 | Flexoptix |  | 8h |
| 72 | 14 | **vendor set up - network reseller** | 9 |  |
| 73 | 14.1 | interview resellers, |  | 8h |
| 74 | 14.2 | request quote | 73 | 8h |
| 75 | 14.3 | Review contract paperwork | 74 | 8h |
| 76 | 14.4 | Sign Order (actual order) | 75 | 8h |
| 77 | 15 | **vendor set up - Integrator** | 31, 76 |  |
| 78 | 15.1 | interview integrators | 9 | 16h |
| 79 | 15.2 | visit location |  | 8h |
| 80 | 15.3 | Request quote | 79 | 16h |
| 81 | 15.4 | Review contract paperwork | 80 | 16h |
| 82 | 15.5 | revise bom | 81 | 16h |
| 83 | 15.6 | layout and cabling verification | 82 | 16h |
| 84 | 15.7 | Sign Order (actual order) | 31, 83 | 8h |
| 85 | 16 | **Sundries:** | 9 |  |
| 86 | 16.1 | add parts to shopping lists |  | 16h |
| 87 | 16.2 | update budget |  | 8h |
| 88 | 16.3 | order parts. | 31 | 8h |

| ID | WBS | Task | Type | Predecessors | Work |
| --- | --- | --- | --- | --- | --- |
| 89 | 17 | **LOCAL RIR (eg: ARIN)** |  | 9 |  |
| 90 | 17.1 | Create POC Record |  |  | 8h |
| 91 | 17.2 | Create ORGid |  | 90 | 24h |
| 92 | 17.3 | ASN Request |  | 91 | 24h |
| 93 | 17.4 | IPv6 request |  | 92 | 24h |
| 94 | 17.5 | IPv4 transfer pre-approval |  | 93 | 24h |
| 95 | 17.6 | IPv4 waiting list |  | 94 | 24h |
| 96 | 17.7 | procure IPv4 space from broker market |  | 95 | 24h |
| 97 | 17.8 | Update Budget |  | 96 | 8h |
| 98 | 17.9 | Create Routing Objects. |  | 97 | 8h |
| 99 | 17.10 | Update network providers on IP/ASN info |  | 98 | 8h |
| 100 | 18 | IMPLEMENTATION PHASE | milestone | 20, 46, 47 |  |
| 101 | 19 | Increase meeting cadence |  |  | 8h |
| 102 | 20 | **Integrator** |  | 24 |  |
| 103 | 20.1 | Rack build time (parts arrival) |  |  | 120h |
| 104 | 20.2 | Confirm rack assembly. |  | 103 | 8h |
| 105 | 20.3 | provide pre-configuration (if needed) |  | 104 | 16h |
| 106 | 20.4 | verify appropriate code revs. |  | 105 | 8h |
| 107 | 20.5 | verify appropriate cabling |  | 106 | 8h |
| 108 | 20.6 | Rack shipped to datacenter |  | 20, 78, 107 | 16h |
| 109 | 21 | **Location** |  | 20 |  |
| 110 | 21.1 | Power circuits delivered |  |  | 80h |
| 111 | 21.2 | low voltage cabling work |  |  | 80h |
| 112 | 21.3 | misc (eg: bolt down system) work |  |  | 40h |
| 113 | 21.4 | keycard/palm/fingerprint reader installed |  |  | 80h |
| 114 | 21.5 | Cage ready | milestone | 110, 111, 112, 113 |  |
| 115 | 21.6 | Confirm ability to open tickets |  | 114 | 8h |
| 116 | 21.7 | confirm ability to visit |  | 114 | 8h |
| 117 | 21.8 | Open tickets for all incoming shipments |  | 114 | 8h |
| 118 | 21.9 | Open tickets for all needed crossconnects |  | 114 | 8h |
| 119 | 21.10 | Open tickets for boltdown |  | 114 | 8h |
| 120 | 21.11 | Open tickets to energize power |  | 114 | 8h |

| ID | WBS | Task | Predecessors | Work |
| --- | --- | --- | --- | --- |
| 121 | 22 | **Racks-Ready** |  |  |
| 122 | 22.1 | Racks received at datacenter | 109 | 8h |
| 123 | 22.2 | Racks placed in datacenter | 122 | 8h |
| 124 | 22.3 | racks bolted down | 123 | 8h |
| 125 | 22.4 | racks powered on. | 124 | 8h |
| 126 | 22.5 | Panels are set up to receive xconnects. | 125 | 8h |
| 127 | 22.6 | routers / switches BASE Config. | 125 | 16h |
| 128 | 22.7 | rack to spine interconnect cabling | 125 | 16h |
| 129 | 23 | **Sundries work** |  |  |
| 130 | 23.1 | Sundries arrive | 109 | 40h |
| 131 | 23.2 | Sundries unpacked/assembled | 130 | 8h |
| 132 | 24 | **Network Provider bringup** |  |  |
| 133 | 24.1 | Network provider xconnect finished | 127 | 16h |
| 134 | 24.2 | Network provider link working | 133 | 8h |
| 135 | 25 | **Peering Fabric** |  |  |
| 136 | 25.1 | Peering fabric xconnect finished | 127 | 16h |
| 137 | 25.2 | Peering Fabric link brought up | 136 | 8h |
| 138 | 26 | **Networking** |  |  |
| 139 | 26.1 | Routing ROAs created | 132 | 8h |
| 140 | 26.2 | Test all route objects. | 139 | 8h |
| 141 | 26.3 | Network Configuration Final | 140 | 40h |
| 142 | 27 | OOB verification | 138 | 8h |
| 143 | 28 | Documentation final updates | 138, 142 | 40h |
| 144 | 29 | **Server Imaging** | 138 |  |
| 145 | 29.1 | Server services created (eg: Dns, dhcp) |  | 8h |
| 146 | 29.2 | Web/app/db configuration | 145 | 80h |
| 147 | 29.3 | Server end to end tests | 146 | 16h |
| 148 | 29.4 | Stress test | 147 | 8h |

| ID | WBS | Task | Type | Predecessors | Work |
| --- | --- | --- | --- | --- | --- |
| 149 | 30 | **Monitoring:** |  | 146 |  |
| 150 | 30.1 | Syslog, snmp Sflow monitoring |  |  | 8h |
| 151 | 30.2 | System Monitoring |  |  | 16h |
| 152 | 30.3 | Grafana dashboards. |  | 151 | 16h |
| 153 | 30.4 | Alerting/escalation |  | 152 | 8h |
| 154 | 31 | **Failure Testing** |  | 149 |  |
| 155 | 31.1 | Fail a server (remove a drive, remove the network) - confirm alerts come in, confirm tickets are filed, and impact |  |  | 8h |
| 156 | 31.2 | Fail a network device. Confirm alerts come in, tickets filed, etc. |  | 155 | 8h |
| 157 | 31.3 | Fail a rack of equipment. Confirm alerts, tickets etc. |  | 156 | 8h |
| 158 | 31.4 | Fail and restore the DC, confirm things come back up as expected. Document, and resolve issues. |  | 157 | 8h |
| 159 | 31.5 | Test rolling back a deployment |  | 158 | 8h |
| 160 | 31.6 | Benchmark the site, and see what your limitations are. |  | 159 | 40h |
| 161 | 32 | **Cutover** |  | 154 |  |
| 162 | 32.1 | Data migration to site |  |  | 8h |
| 163 | 32.2 | GO LIVE | milestone | 162 |  |
| 164 | 33 | **POST INSTALL** |  |  |  |
| 165 | 33.1 | Archive of old site |  | 163 | 160h |
| 166 | 33.2 | Removal of old site |  | 163 | 160h |
| 167 | 34 | **Every quarter moving forward:** |  | 161 |  |
| 168 | 34.1 | Review ongoing capacity plan. | milestone |  |  |
| 169 | 34.2 | Send forecast to integrator / vendors | milestone |  |  |
| 170 | 34.3 | Order additional power as needed | milestone |  |  |
| 171 | 34.4 | Order additional space as needed etc. | milestone |  |  |
| 172 | 34.5 | Review a DR Plan. | milestone |  |  |
